# lab_01.1

How a schedule from MS Project changed from version to version. A marks actual dates.

## Version 1 (data date 2023-05-12, saved 2023-03-18, file lab_04_1.mpp)

Note of the change: readme

| ID | WBS | Task | Duration | Start | Finish | Predecessors | Total float | Constraint |
| --- | --- | --- | --- | --- | --- | --- | --- | --- |
| 1 |  | Начало проекта | 0w | 2023-03-01 08:00 | 2023-03-01 08:00 |  | 42.53d |  |
| 2 | 2 | **Создание интерфейса** | 72.17d | 2023-03-01 09:00 | 2023-06-16 10:23 | 1 | 0d |  |
| 3 | 2.1 | **Разработка дизайна интерфейса** | 21.43d | 2023-03-01 09:00 | 2023-03-31 12:25 |  | 42.53d |  |
| 4 |  | Разработка 2D графических элементов | 4.29w | 2023-03-01 09:00 | 2023-03-31 12:25 |  | 42.53d |  |
| 5 |  | Разработка 3D графических элементов | 1.66w | 2023-03-01 10:00 | 2023-03-14 14:12 | 4SS | 42.81d |  |
| 6 |  | Создание заставки | 2.5w | 2023-03-14 14:12 | 2023-03-31 10:10 | 5 | 42.81d |  |
| 7 |  | Программирование интерфейса | 1.5w | 2023-06-05 15:23 | 2023-06-16 10:23 | 3, 12 | 0d |  |
| 8 | 3 | **Построение базы объектов** | 78.73d | 2023-03-23 14:00 | 2023-07-18 10:49 |  | 0.48d |  |
| 9 |  | Анализ и построение структуры базы объектов | 2w | 2023-03-23 14:00 | 2023-04-06 15:00 |  | 1.38d |  |
| 10 |  | Программирование средств обработки базы объектов | 1.5w | 2023-04-07 15:49 | 2023-04-19 10:49 | 9 | 0.48d |  |
| 11 |  | Наполнение базы объектов | 12w | 2023-04-19 10:49 | 2023-07-18 10:49 | 10 | 0.48d |  |
| 12 | 4 | **Создание ядра GIS** | 64.55d | 2023-03-01 10:00 | 2023-06-05 15:23 |  | 0d |  |
| 13 |  | Анализ и проектирование ядра | 3.05w | 2023-03-01 10:00 | 2023-03-23 12:00 |  | 0d |  |
| 14 |  | Создание модели ядра | 2.02w | 2023-03-23 12:00 | 2023-04-06 12:49 | 13 | 0d |  |
| 15 |  | Тестирование модели ядра | 0.25w | 2023-04-06 12:49 | 2023-04-07 15:49 | 14 | 0d |  |
| 16 |  | Создание рабочей версии ядра | 7.54w | 2023-04-07 15:49 | 2023-06-05 15:23 | 15 | 0d |  |
| 17 |  | Создание мультимедиа – наполнения | 6w | 2023-03-31 12:25 | 2023-05-18 10:25 | 3 | 42.53d |  |
| 18 |  | Создание справочной системы | 2w | 2023-06-27 14:23 | 2023-07-11 15:23 | 7 | 5.04d |  |
| 19 | 7 | **Создание руководства пользователя** | 17.25d | 2023-06-01 10:23 | 2023-06-27 12:23 | 7FS-10d | 0d |  |
| 20 |  | Разработка дизайна руководства | 1w | 2023-06-01 10:23 | 2023-06-08 10:23 |  | 0d |  |
| 21 |  | Написание руководства пользователя | 3w | 2023-06-05 10:23 | 2023-06-27 12:23 | 20SS+2d | 0d |  |
| 22 | 8 | **Создание web – сайта и поддержка** | 23.38d | 2023-06-05 10:23 | 2023-07-07 14:23 |  | 0d |  |
| 23 |  | Разработка структуры сайта | 1d | 2023-06-05 10:23 | 2023-06-06 10:23 | 21SS | 0d |  |
| 24 |  | Разработка дизайна сайта | 1.43w | 2023-06-06 10:23 | 2023-06-16 11:23 | 23 | 0d |  |
| 25 |  | Наполнение сайта | 3w | 2023-06-16 11:23 | 2023-07-07 14:23 | 24 | 0d |  |
| 26 |  | Тестирование сайта | 2.43w | 2023-06-30 14:23 | 2023-07-18 15:40 | 22FS-1w | 0d |  |
| 27 |  | Сдача сайта в эксплуатацию | 0w | 2023-07-18 15:40 | 2023-07-18 15:40 | 26 | 0d |  |
| 28 | 11 | **Совещание** | 90d | 2023-03-01 08:00 | 2023-07-12 09:00 |  | 0d |  |
| 29 |  | Совещание 1 | 1h | 2023-03-01 08:00 | 2023-03-01 09:00 |  |  | start no earlier than 2023-03-01 08:00 |
| 30 |  | Совещание 2 | 1h | 2023-03-08 08:00 | 2023-03-08 09:00 |  |  | start no earlier than 2023-03-08 08:00 |
| 31 |  | Совещание 3 | 1h | 2023-03-15 08:00 | 2023-03-15 09:00 |  |  | start no earlier than 2023-03-15 08:00 |
| 32 |  | Совещание 4 | 1h | 2023-03-22 08:00 | 2023-03-22 09:00 |  |  | start no earlier than 2023-03-22 08:00 |
| 33 |  | Совещание 5 | 1h | 2023-03-29 08:00 | 2023-03-29 09:00 |  |  | start no earlier than 2023-03-29 08:00 |
| 34 |  | Совещание 6 | 1h | 2023-04-05 08:00 | 2023-04-05 09:00 |  |  | start no earlier than 2023-04-05 08:00 |
| 35 |  | Совещание 7 | 1h | 2023-04-12 08:00 | 2023-04-12 09:00 |  |  | start no earlier than 2023-04-12 08:00 |
| 36 |  | Совещание 8 | 1h | 2023-04-19 08:00 | 2023-04-19 09:00 |  |  | start no earlier than 2023-04-19 08:00 |
| 37 |  | Совещание 9 | 1h | 2023-04-26 08:00 | 2023-04-26 09:00 |  |  | start no earlier than 2023-04-26 08:00 |
| 38 |  | Совещание 10 | 1h | 2023-05-03 08:00 | 2023-05-03 09:00 |  |  | start no earlier than 2023-05-03 08:00 |
| 39 |  | Совещание 11 | 1h | 2023-05-10 08:00 | 2023-05-10 09:00 |  |  | start no earlier than 2023-05-10 08:00 |
| 40 |  | Совещание 12 | 1h | 2023-05-17 08:00 | 2023-05-17 09:00 |  |  | start no earlier than 2023-05-17 08:00 |
| 41 |  | Совещание 13 | 1h | 2023-05-24 08:00 | 2023-05-24 09:00 |  |  | start no earlier than 2023-05-24 08:00 |
| 42 |  | Совещание 14 | 1h | 2023-05-31 08:00 | 2023-05-31 09:00 |  |  | start no earlier than 2023-05-31 08:00 |
| 43 |  | Совещание 15 | 1h | 2023-06-07 08:00 | 2023-06-07 09:00 |  |  | start no earlier than 2023-06-07 08:00 |
| 44 |  | Совещание 16 | 1h | 2023-06-14 08:00 | 2023-06-14 09:00 |  |  | start no earlier than 2023-06-14 08:00 |
| 45 |  | Совещание 17 | 1h | 2023-06-21 08:00 | 2023-06-21 09:00 |  |  | start no earlier than 2023-06-21 08:00 |
| 46 |  | Совещание 18 | 1h | 2023-06-28 08:00 | 2023-06-28 09:00 |  |  | start no earlier than 2023-06-28 08:00 |
| 47 |  | Совещание 19 | 1h | 2023-07-05 08:00 | 2023-07-05 09:00 |  |  | start no earlier than 2023-07-05 08:00 |
| 48 |  | Совещание 20 | 1h | 2023-07-12 08:00 | 2023-07-12 09:00 |  |  | start no earlier than 2023-07-12 08:00 |

## Version 2 (data date 2023-05-12, saved 2023-03-18, file lab_04_2.mpp)

Note of the change: readme

Last finish stays 2023-07-18.

Changed:

| ID | Task | Start | Finish | Duration | Total float |
| --- | --- | --- | --- | --- | --- |
| 2 | **Создание интерфейса** | 2023-03-01 09:00 A |  |  |  |
| 3 | **Разработка дизайна интерфейса** | 2023-03-01 09:00 A | 2023-03-31 12:25 → 2023-04-04 15:50 (+4d) | 21.43d → 23.73d | 42.53d → 40.23d |
| 5 | Разработка 3D графических элементов | 2023-03-01 10:00 → 2023-03-06 09:00 A (+5d) | 2023-03-14 14:12 → 2023-03-17 10:52 (+3d) | 1.66w → 1.62w | 42.81d → 40.23d |
| 6 | Создание заставки | 2023-03-14 14:12 → 2023-03-17 10:52 (+3d) | 2023-03-31 10:10 → 2023-04-04 15:50 (+4d) | 2.5w → 2.47w | 42.81d → 40.23d |
| 17 | Создание мультимедиа – наполнения | 2023-03-31 12:25 → 2023-04-04 15:50 (+4d) | 2023-05-18 10:25 → 2023-05-22 12:50 (+4d) |  | 42.53d → 40.23d |

## Version 3 (data date 2023-05-12, saved 2023-03-18, file lab_04_3.mpp)

Note of the change: readme

Last finish stays 2023-07-18.

Changed:

| ID | Task | Start | Finish | Duration | Total float |
| --- | --- | --- | --- | --- | --- |
| 8 | **Построение базы объектов** | 2023-03-23 14:00 → 2023-03-23 11:48 | 2023-07-18 10:49 → 2023-07-18 17:36 | 78.73d → 79.6d | 0.48d → 0d |
| 9 | Анализ и построение структуры базы объектов | 2023-03-23 14:00 → 2023-03-23 11:48 | 2023-04-06 15:00 → 2023-04-07 11:48 (+1d) | 2w → 2.2w | 1.38d → 0d |
| 10 | Программирование средств обработки базы объектов | 2023-04-07 15:49 → 2023-04-07 15:36 | 2023-04-19 10:49 → 2023-04-19 17:36 | 1.5w → 1.65w | 0.48d → 0d |
| 11 | Наполнение базы объектов | 2023-04-19 10:49 → 2023-04-19 17:36 | 2023-07-18 10:49 → 2023-07-18 17:36 |  | 0.48d → 0d |

## Version 4 (data date 2023-05-12, saved 2023-03-18, file lab_04_4.mpp)

Note of the change: readme

Last finish stays 2023-07-18.

Changed:

| ID | Task | Other |
| --- | --- | --- |
| 15 | Тестирование модели ядра | resources Программист №1; Программист №2; Программист №3; Программист №4 → Программист №1; Программист №2; Программист №3; Программист №4; Спец ПО |

## Version 5 (data date 2023-05-12, saved 2023-03-18, file lab_04_6.mpp)

Note of the change: readme

Last finish stays 2023-07-18.

Changed:

| ID | Task | Start | Finish | Duration | Total float | Other |
| --- | --- | --- | --- | --- | --- | --- |
| 2 | **Создание интерфейса** |  | 2023-06-16 10:23 → 2023-06-16 14:21 | 72.17d → 72.54d | 0.24d → 0d |  |
| 3 | **Разработка дизайна интерфейса** |  | 2023-04-04 15:50 → 2023-04-03 14:50 (-1d) | 23.73d → 22.61d | 40.47d → 42.07d |  |
| 5 | Разработка 3D графических элементов |  | 2023-03-17 10:52 → 2023-03-16 16:32 (-1d) | 1.62w → 1.56w | 40.47d → 42.07d |  |
| 6 | Создание заставки | 2023-03-17 10:52 → 2023-03-16 16:32 (-1d) | 2023-04-04 15:50 → 2023-04-03 14:50 (-1d) | 2.47w → 2.36w | 40.47d → 42.07d |  |
| 7 | Программирование интерфейса | 2023-06-05 15:23 → 2023-06-06 09:21 (+1d) | 2023-06-16 10:23 → 2023-06-16 14:21 |  | 0.24d → 0d |  |
| 8 | **Построение базы объектов** | 2023-03-23 11:48 → 2023-03-23 09:00 | 2023-07-18 17:36 → 2023-07-18 11:00 | 79.6d → 79.25d | 0d → 0.43d |  |
| 9 | Анализ и построение структуры базы объектов | 2023-03-23 11:48 → 2023-03-23 09:00 | 2023-04-07 11:48 → 2023-04-06 18:00 (-1d) |  | 0d → 0.43d |  |
| 10 | Программирование средств обработки базы объектов | 2023-04-07 15:36 → 2023-04-07 09:00 | 2023-04-19 17:36 → 2023-04-19 11:00 |  | 0d → 0.43d |  |
| 11 | Наполнение базы объектов | 2023-04-19 17:36 → 2023-04-19 11:00 | 2023-07-18 17:36 → 2023-07-18 11:00 |  | 0d → 0.43d |  |
| 12 | **Создание ядра GIS** | 2023-03-01 10:00 → 2023-03-01 09:00 | 2023-06-05 15:23 → 2023-06-06 09:21 (+1d) | 64.55d → 65.04d | 0.24d → 0d |  |
| 13 | Анализ и проектирование ядра | 2023-03-01 10:00 → 2023-03-01 09:00 | 2023-03-23 12:00 → 2023-03-22 18:00 (-1d) | 3.05w → 3w | 0.24d → 0d |  |
| 14 | Создание модели ядра | 2023-03-23 12:00 → 2023-03-23 09:00 | 2023-04-06 12:49 → 2023-04-06 09:47 |  | 0.24d → 0d |  |
| 15 | Тестирование модели ядра | 2023-04-06 12:49 → 2023-04-06 09:47 | 2023-04-07 15:49 → 2023-04-19 14:47 (+12d) |  | 0.24d → 0d |  |
| 16 | Создание рабочей версии ядра | 2023-04-07 15:49 → 2023-04-19 14:47 (+12d) | 2023-06-05 15:23 → 2023-06-06 09:21 (+1d) | 7.54w → 6.09w | 0.24d → 0d |  |
| 17 | Создание мультимедиа – наполнения | 2023-04-04 15:50 → 2023-04-03 14:50 (-1d) | 2023-05-22 12:50 → 2023-05-18 14:50 (-4d) |  | 40.47d → 42.07d |  |
| 18 | Создание справочной системы | 2023-06-27 14:23 → 2023-06-27 14:21 | 2023-07-11 15:23 → 2023-07-11 14:21 |  | 5.28d → 5.13d |  |
| 19 | **Создание руководства пользователя** | 2023-06-01 10:23 → 2023-06-01 14:21 | 2023-06-27 12:23 → 2023-06-27 14:21 | 17.25d → 17d | 0.24d → 0d |  |
| 20 | Разработка дизайна руководства | 2023-06-01 10:23 → 2023-06-01 14:21 | 2023-06-08 10:23 → 2023-06-08 14:21 |  | 0.24d → 0d |  |
| 21 | Написание руководства пользователя | 2023-06-05 10:23 → 2023-06-05 14:21 | 2023-06-27 12:23 → 2023-06-27 14:21 |  | 0.24d → 0d |  |
| 22 | **Создание web – сайта и поддержка** | 2023-06-05 10:23 → 2023-06-05 14:21 | 2023-07-07 14:23 → 2023-07-07 14:21 | 23.38d → 23d | 0.24d → 0d |  |
| 23 | Разработка структуры сайта | 2023-06-05 10:23 → 2023-06-05 14:21 | 2023-06-06 10:23 → 2023-06-06 14:21 |  | 0.24d → 0d |  |
| 24 | Разработка дизайна сайта | 2023-06-06 10:23 → 2023-06-06 14:21 | 2023-06-16 11:23 → 2023-06-16 14:21 | 1.43w → 1.4w | 0.24d → 0d |  |
| 25 | Наполнение сайта | 2023-06-16 11:23 → 2023-06-16 14:21 | 2023-07-07 14:23 → 2023-07-07 14:21 |  | 0.24d → 0d |  |
| 26 | Тестирование сайта | 2023-06-30 14:23 → 2023-06-30 14:21 | 2023-07-18 15:40 → 2023-07-18 15:25 |  | 0.24d → 0d |  |
| 27 | Сдача сайта в эксплуатацию | 2023-07-18 15:40 → 2023-07-18 15:25 | 2023-07-18 15:40 → 2023-07-18 15:25 |  | 0.24d → 0d |  |
| 34 | Совещание 6 |  |  |  |  | resources 3D-аниматор; Мультимедиа- корреспондент; Ведущий программист; Web-дизайнер; Системный аналитик; Технический писатель; Художник-дизайнер → 3D-аниматор; Мультимедиа- корреспондент; Ведущий программист; Системный аналитик; Художник-дизайнер |
| 35 | Совещание 7 |  |  |  |  | resources 3D-аниматор; Мультимедиа- корреспондент; Ведущий программист; Web-дизайнер; Системный аналитик; Технический писатель; Художник-дизайнер → Мультимедиа- корреспондент; Ведущий программист |
| 36 | Совещание 8 |  |  |  |  | resources 3D-аниматор; Мультимедиа- корреспондент; Ведущий программист; Web-дизайнер; Системный аналитик; Технический писатель; Художник-дизайнер → Мультимедиа- корреспондент; Ведущий программист |
| 37 | Совещание 9 |  |  |  |  | resources 3D-аниматор; Мультимедиа- корреспондент; Ведущий программист; Web-дизайнер; Системный аналитик; Технический писатель; Художник-дизайнер → Мультимедиа- корреспондент; Ведущий программист |
| 38 | Совещание 10 |  |  |  |  | resources 3D-аниматор; Мультимедиа- корреспондент; Ведущий программист; Web-дизайнер; Системный аналитик; Технический писатель; Художник-дизайнер → Мультимедиа- корреспондент; Ведущий программист |
| 39 | Совещание 11 |  |  |  |  | resources 3D-аниматор; Мультимедиа- корреспондент; Ведущий программист; Web-дизайнер; Системный аналитик; Технический писатель; Художник-дизайнер → Мультимедиа- корреспондент; Ведущий программист |
| 40 | Совещание 12 |  |  |  |  | resources 3D-аниматор; Мультимедиа- корреспондент; Ведущий программист; Web-дизайнер; Системный аналитик; Технический писатель; Художник-дизайнер → Мультимедиа- корреспондент; Ведущий программист |
| 41 | Совещание 13 |  |  |  |  | resources 3D-аниматор; Мультимедиа- корреспондент; Ведущий программист; Web-дизайнер; Системный аналитик; Технический писатель; Художник-дизайнер → Мультимедиа- корреспондент; Ведущий программист |
| 42 | Совещание 14 |  |  |  |  | resources 3D-аниматор; Мультимедиа- корреспондент; Ведущий программист; Web-дизайнер; Системный аналитик; Технический писатель; Художник-дизайнер → Ведущий программист; Художник-дизайнер |
| 43 | Совещание 15 |  |  |  |  | resources 3D-аниматор; Мультимедиа- корреспондент; Ведущий программист; Web-дизайнер; Системный аналитик; Технический писатель; Художник-дизайнер → 3D-аниматор; Ведущий программист; Web-дизайнер; Технический писатель; Художник-дизайнер |
| 44 | Совещание 16 |  |  |  |  | resources 3D-аниматор; Мультимедиа- корреспондент; Ведущий программист; Web-дизайнер; Системный аналитик; Технический писатель; Художник-дизайнер → 3D-аниматор; Ведущий программист; Web-дизайнер; Технический писатель; Художник-дизайнер |
| 45 | Совещание 17 |  |  |  |  | resources 3D-аниматор; Мультимедиа- корреспондент; Ведущий программист; Web-дизайнер; Системный аналитик; Технический писатель; Художник-дизайнер → Web-дизайнер; Технический писатель |
| 46 | Совещание 18 |  |  |  |  | resources 3D-аниматор; Мультимедиа- корреспондент; Ведущий программист; Web-дизайнер; Системный аналитик; Технический писатель; Художник-дизайнер → Ведущий программист; Web-дизайнер; Технический писатель |
| 47 | Совещание 19 |  |  |  |  | resources 3D-аниматор; Мультимедиа- корреспондент; Ведущий программист; Web-дизайнер; Системный аналитик; Технический писатель; Художник-дизайнер → Ведущий программист; Web-дизайнер; Технический писатель |
| 48 | Совещание 20 |  |  |  |  | resources 3D-аниматор; Мультимедиа- корреспондент; Ведущий программист; Web-дизайнер; Системный аналитик; Технический писатель; Художник-дизайнер → Ведущий программист; Технический писатель |

## Version 6 (data date 2023-05-12, saved 2023-03-18, file lab_04_final.mpp)

Note of the change: readme

Last finish stays 2023-07-18. Complete tasks 0 → 20.

Changed:

| ID | Task | Start | Finish | Complete | Total float |
| --- | --- | --- | --- | --- | --- |
| 1 | Начало проекта | 2023-03-01 08:00 A | 2023-03-01 08:00 A | 0% → 100% | 3d → none |
| 2 | **Создание интерфейса** |  |  | 0% → 85% |  |
| 3 | **Разработка дизайна интерфейса** |  | 2023-04-03 14:50 A | 0% → 100% | 42.07d → none |
| 4 | Разработка 2D графических элементов | 2023-03-01 09:00 A | 2023-03-31 12:25 A | 0% → 100% | 3d → none |
| 5 | Разработка 3D графических элементов |  | 2023-03-16 16:32 A | 0% → 100% | 42.07d → none |
| 6 | Создание заставки | 2023-03-16 16:32 A | 2023-04-03 14:50 A | 0% → 100% | 42.07d → none |
| 8 | **Построение базы объектов** | 2023-03-23 09:00 A |  | 0% → 43% |  |
| 9 | Анализ и построение структуры базы объектов | 2023-03-23 09:00 A | 2023-04-06 18:00 A | 0% → 100% | 0.43d → none |
| 10 | Программирование средств обработки базы объектов | 2023-04-07 09:00 A | 2023-04-19 11:00 A | 0% → 100% | 0.43d → none |
| 11 | Наполнение базы объектов | 2023-04-19 11:00 A |  | 0% → 25% |  |
| 12 | **Создание ядра GIS** | 2023-03-01 09:00 A |  | 0% → 72% |  |
| 13 | Анализ и проектирование ядра | 2023-03-01 09:00 A | 2023-03-22 18:00 A | 0% → 100% | 0d → none |
| 14 | Создание модели ядра | 2023-03-23 09:00 A | 2023-04-06 09:47 A | 0% → 100% | 0d → none |
| 15 | Тестирование модели ядра | 2023-04-06 09:47 A | 2023-04-19 14:47 A | 0% → 100% | 0d → none |
| 16 | Создание рабочей версии ядра | 2023-04-19 14:47 A |  | 0% → 47% |  |
| 17 | Создание мультимедиа – наполнения | 2023-04-03 14:50 A |  | 0% → 88% |  |
| 28 | **Совещание** | 2023-03-01 08:00 A |  | 0% → 55% |  |
| 29 | Совещание 1 | 2023-03-01 08:00 A | 2023-03-01 09:00 A | 0% → 100% |  |
| 30 | Совещание 2 | 2023-03-08 08:00 A | 2023-03-08 09:00 A | 0% → 100% |  |
| 31 | Совещание 3 | 2023-03-15 08:00 A | 2023-03-15 09:00 A | 0% → 100% |  |
| 32 | Совещание 4 | 2023-03-22 08:00 A | 2023-03-22 09:00 A | 0% → 100% |  |
| 33 | Совещание 5 | 2023-03-29 08:00 A | 2023-03-29 09:00 A | 0% → 100% |  |
| 34 | Совещание 6 | 2023-04-05 08:00 A | 2023-04-05 09:00 A | 0% → 100% |  |
| 35 | Совещание 7 | 2023-04-12 08:00 A | 2023-04-12 09:00 A | 0% → 100% |  |
| 36 | Совещание 8 | 2023-04-19 08:00 A | 2023-04-19 09:00 A | 0% → 100% |  |
| 37 | Совещание 9 | 2023-04-26 08:00 A | 2023-04-26 09:00 A | 0% → 100% |  |
| 38 | Совещание 10 | 2023-05-03 08:00 A | 2023-05-03 09:00 A | 0% → 100% |  |
| 39 | Совещание 11 | 2023-05-10 08:00 A | 2023-05-10 09:00 A | 0% → 100% |  |

## Version 7 (data date 2023-05-12, saved 2023-03-27, file lab_04_final_test.mpp)

Note of the change: readme

Last finish 2023-07-18 → 2023-07-19 (+1d).

Changed:

| ID | Task | Start | Finish | Duration | Total float |
| --- | --- | --- | --- | --- | --- |
| 18 | Создание справочной системы | 2023-06-27 14:21 → 2023-06-27 17:21 | 2023-07-11 14:21 → 2023-07-12 09:21 (+1d) |  | 5.13d → 5.16d |
| 19 | **Создание руководства пользователя** |  | 2023-06-27 14:21 → 2023-06-27 16:21 | 17d → 17.25d |  |
| 21 | Написание руководства пользователя |  | 2023-06-27 14:21 → 2023-06-27 16:21 |  |  |
| 22 | **Создание web – сайта и поддержка** |  | 2023-07-07 14:21 → 2023-07-10 09:21 (+3d) | 23d → 23.5d |  |
| 24 | Разработка дизайна сайта |  | 2023-06-16 14:21 → 2023-06-16 15:21 | 1.4w → 1.43w |  |
| 25 | Наполнение сайта | 2023-06-16 14:21 → 2023-06-16 15:21 | 2023-07-07 14:21 → 2023-07-10 09:21 (+3d) |  |  |
| 26 | Тестирование сайта | 2023-06-30 14:21 → 2023-07-03 09:21 (+3d) | 2023-07-18 15:25 → 2023-07-19 10:38 (+1d) |  |  |
| 27 | Сдача сайта в эксплуатацию | 2023-07-18 15:25 → 2023-07-19 10:38 (+1d) | 2023-07-18 15:25 → 2023-07-19 10:38 (+1d) |  |  |
