# rk1_2

How a schedule from MS Project changed from version to version. A marks actual dates.

## Version 1 (saved 2023-03-21, file rk1_2.mpp)

Note of the change: readme

| ID | Task | Duration | Start | Finish | Total float |
| --- | --- | --- | --- | --- | --- |
| 1 | Начало проекта | 0d | 2023-04-03 | 2023-04-03 | 20d |
| 2 | Установка ПО | 15d | 2023-04-03 | 2023-04-21 | 5d |
| 3 | Обучение персонала | 20d | 2023-04-03 | 2023-04-28 | 0d |
| 4 | Разработка представительских сайтов | 1d | 2023-04-03 | 2023-04-03 | 19d |
| 5 | Разработка сайта 1 | 5d | 2023-04-03 | 2023-04-07 | 15d |
| 6 | Разработка сайта 2 | 5d | 2023-04-03 | 2023-04-07 | 15d |
| 7 | Представительские сайты созданы | 0d | 2023-04-03 | 2023-04-03 | 20d |
| 8 | Разработка коропоративного сайта | 1d | 2023-04-03 | 2023-04-03 | 19d |
| 9 | Проектирование сайта | 5d | 2023-04-03 | 2023-04-07 | 15d |
| 10 | Программирование сайта | 15d | 2023-04-03 | 2023-04-21 | 5d |
| 11 | Наполнение сайта | 3d | 2023-04-03 | 2023-04-05 | 17d |
| 12 | Тестирование сайта | 5d | 2023-04-03 | 2023-04-07 | 15d |
| 13 | Сдача сайта заказчику | 0d | 2023-04-03 | 2023-04-03 | 20d |

## Version 2 (saved 2023-03-21, file rk1_3.mpp)

Note of the change: readme

Last finish stays 2023-04-28.

Changed:

| ID | Task | Finish | Duration | Total float |
| --- | --- | --- | --- | --- |
| 4 | **Разработка представительских сайтов** | 2023-04-03 → 2023-04-07 (+4d) | 1d → 5d | 19d → 15d |
| 8 | **Разработка коропоративного сайта** | 2023-04-03 → 2023-04-21 (+18d) | 1d → 15d | 19d → 5d |

## Version 3 (saved 2023-03-21, file rk1_4.mpp)

Note of the change: readme

Last finish 2023-04-28 → 2023-06-23 (+56d).

Changed:

| ID | Task | Start | Finish | Duration | Total float | Predecessors |
| --- | --- | --- | --- | --- | --- | --- |
| 2 | Установка ПО | 2023-04-03 → 2023-04-04 (+1d) | 2023-04-21 → 2023-04-24 (+3d) |  | 5d → 0d | none → 1FS+1d |
| 3 | Обучение персонала | 2023-04-03 → 2023-04-18 (+15d) | 2023-04-28 → 2023-05-18 (+20d) |  |  | none → 2SS+10d |
| 4 | **Разработка представительских сайтов** | 2023-04-03 → 2023-05-19 (+46d) | 2023-04-07 → 2023-05-30 (+53d) | 5d → 8d | 15d → 17d | none → 3 |
| 5 | Разработка сайта 1 | 2023-04-03 → 2023-05-19 (+46d) | 2023-04-07 → 2023-05-25 (+48d) |  | 15d → 17d |  |
| 6 | Разработка сайта 2 | 2023-04-03 → 2023-05-24 (+51d) | 2023-04-07 → 2023-05-30 (+53d) |  | 15d → 17d | none → 5FS-2d |
| 7 | Представительские сайты созданы | 2023-04-03 → 2023-05-30 (+57d) | 2023-04-03 → 2023-05-30 (+57d) |  | 20d → 17d | none → 4 |
| 8 | **Разработка коропоративного сайта** | 2023-04-03 → 2023-05-19 (+46d) | 2023-04-21 → 2023-06-23 (+63d) | 15d → 25d | 5d → 0d | none → 3 |
| 9 | Проектирование сайта | 2023-04-03 → 2023-05-19 (+46d) | 2023-04-07 → 2023-05-25 (+48d) |  | 15d → 0d |  |
| 10 | Программирование сайта | 2023-04-03 → 2023-05-26 (+53d) | 2023-04-21 → 2023-06-16 (+56d) |  | 5d → 0d | none → 9 |
| 11 | Наполнение сайта | 2023-04-03 → 2023-06-14 (+72d) | 2023-04-05 → 2023-06-16 (+72d) |  | 17d → 0d | none → 10FS-3d |
| 12 | Тестирование сайта | 2023-04-03 → 2023-06-19 (+77d) | 2023-04-07 → 2023-06-23 (+77d) |  | 15d → 0d | none → 11 |
| 13 | Сдача сайта заказчику | 2023-04-03 → 2023-06-23 (+81d) | 2023-04-03 → 2023-06-23 (+81d) |  | 20d → 0d | none → 12 |

## Version 4 (saved 2023-03-21, file rk1_6.mpp)

Note of the change: readme

Last finish stays 2023-06-23.

Changed:

| ID | Task | Other |
| --- | --- | --- |
| 2 | Установка ПО | resources none → Соколов; Программное обеспечение |
| 3 | Обучение персонала | resources none → Преподаватели [400%]; Соломин; Тимофеев; Петров; Кузнецов; Яковлева; Бумага [3 пач/мес]; Картриджи для принтера |
| 5 | Разработка сайта 1 | resources none → Кузнецов; Тимофеев |
| 6 | Разработка сайта 2 | resources none → Кузнецов; Тимофеев |
| 9 | Проектирование сайта | resources none → Соколов; Петров |
| 10 | Программирование сайта | resources none → Соломин; Яковлева |
| 11 | Наполнение сайта | resources none → Фомина |
| 12 | Тестирование сайта | resources none → Соломин; Яковлева |

## Version 5 (saved 2023-03-21, file rk1_7.mpp)

Note of the change: readme

Last finish stays 2023-06-23.

Added:

| ID | Task | Duration | Start | Finish | Predecessors | Resources |
| --- | --- | --- | --- | --- | --- | --- |
| 6 | Разработка дизайна сайта 1 | 2d | 2023-05-19 | 2023-05-22 |  | Кузнецов |
| 7 | Программирование сайта 1 | 3d | 2023-05-23 | 2023-05-25 | 6 | Тимофеев |
| 9 | Разработка дизайна сайта 2 | 2d | 2023-05-24 | 2023-05-25 |  | Кузнецов |
| 10 | Программирование сайта 2 | 3d | 2023-05-26 | 2023-05-30 | 9 | Тимофеев |

Changed:

| ID | Task | Other |
| --- | --- | --- |
| 5 | **Разработка сайта 1** | resources Кузнецов; Тимофеев → none |
| 8 | **Разработка сайта 2** | resources Кузнецов; Тимофеев → none |

## Version 6 (saved 2023-03-21, file rk1_8_2.mpp)

Note of the change: readme

Last finish 2023-06-23 → 2023-07-06 (+13d).

Changed:

| ID | Task | Start | Finish | Duration | Other |
| --- | --- | --- | --- | --- | --- |
| 2 | Установка ПО |  | 2023-04-24 → 2023-05-11 (+17d) | 15d → 25d |  |
| 3 | Обучение персонала |  | 2023-05-18 → 2023-05-31 (+13d) | 20d → 28.57d | resources Преподаватели [400%]; Соломин; Тимофеев; Петров; Кузнецов; Яковлева; Бумага [3 пач/мес]; Картриджи для принтера → Преподаватели [300%]; Соломин; Тимофеев; Петров; Кузнецов; Яковлева; Бумага [3 пач/мес]; Картриджи для принтера; Соколов |
| 4 | **Разработка представительских сайтов** | 2023-05-19 → 2023-05-31 (+12d) | 2023-05-30 → 2023-06-13 (+14d) |  |  |
| 5 | **Разработка сайта 1** | 2023-05-19 → 2023-05-31 (+12d) | 2023-05-25 → 2023-06-07 (+13d) |  |  |
| 6 | Разработка дизайна сайта 1 | 2023-05-19 → 2023-05-31 (+12d) | 2023-05-22 → 2023-06-02 (+11d) |  |  |
| 7 | Программирование сайта 1 | 2023-05-23 → 2023-06-02 (+10d) | 2023-05-25 → 2023-06-07 (+13d) |  |  |
| 8 | **Разработка сайта 2** | 2023-05-24 → 2023-06-05 (+12d) | 2023-05-30 → 2023-06-13 (+14d) |  |  |
| 9 | Разработка дизайна сайта 2 | 2023-05-24 → 2023-06-05 (+12d) | 2023-05-25 → 2023-06-07 (+13d) |  |  |
| 10 | Программирование сайта 2 | 2023-05-26 → 2023-06-07 (+12d) | 2023-05-30 → 2023-06-13 (+14d) |  |  |
| 11 | Представительские сайты созданы | 2023-05-30 → 2023-06-13 (+14d) | 2023-05-30 → 2023-06-13 (+14d) |  |  |
| 12 | **Разработка коропоративного сайта** | 2023-05-19 → 2023-05-31 (+12d) | 2023-06-23 → 2023-07-06 (+13d) |  |  |
| 13 | Проектирование сайта | 2023-05-19 → 2023-05-31 (+12d) | 2023-05-25 → 2023-06-07 (+13d) |  |  |
| 14 | Программирование сайта | 2023-05-26 → 2023-06-07 (+12d) | 2023-06-16 → 2023-06-29 (+13d) |  |  |
| 15 | Наполнение сайта | 2023-06-14 → 2023-06-26 (+12d) | 2023-06-16 → 2023-06-29 (+13d) |  |  |
| 16 | Тестирование сайта | 2023-06-19 → 2023-06-29 (+10d) | 2023-06-23 → 2023-07-06 (+13d) |  |  |
| 17 | Сдача сайта заказчику | 2023-06-23 → 2023-07-06 (+13d) | 2023-06-23 → 2023-07-06 (+13d) |  |  |

## Version 7 (saved 2023-03-21, file rk1_8.mpp)

Note of the change: readme

Last finish 2023-07-06 → 2023-06-21 (-15d).

Changed:

| ID | Task | Start | Finish | Duration |
| --- | --- | --- | --- | --- |
| 2 | Установка ПО |  | 2023-05-11 → 2023-04-24 (-17d) | 25d → 15d |
| 3 | Обучение персонала |  | 2023-05-31 → 2023-05-16 (-15d) | 28.57d → 17.14d |
| 4 | **Разработка представительских сайтов** | 2023-05-31 → 2023-05-16 (-15d) | 2023-06-13 → 2023-05-26 (-18d) |  |
| 5 | **Разработка сайта 1** | 2023-05-31 → 2023-05-16 (-15d) | 2023-06-07 → 2023-05-23 (-15d) |  |
| 6 | Разработка дизайна сайта 1 | 2023-05-31 → 2023-05-16 (-15d) | 2023-06-02 → 2023-05-18 (-15d) |  |
| 7 | Программирование сайта 1 | 2023-06-02 → 2023-05-18 (-15d) | 2023-06-07 → 2023-05-23 (-15d) |  |
| 8 | **Разработка сайта 2** | 2023-06-05 → 2023-05-19 (-17d) | 2023-06-13 → 2023-05-26 (-18d) |  |
| 9 | Разработка дизайна сайта 2 | 2023-06-05 → 2023-05-19 (-17d) | 2023-06-07 → 2023-05-23 (-15d) |  |
| 10 | Программирование сайта 2 | 2023-06-07 → 2023-05-23 (-15d) | 2023-06-13 → 2023-05-26 (-18d) |  |
| 11 | Представительские сайты созданы | 2023-06-13 → 2023-05-26 (-18d) | 2023-06-13 → 2023-05-26 (-18d) |  |
| 12 | **Разработка коропоративного сайта** | 2023-05-31 → 2023-05-16 (-15d) | 2023-07-06 → 2023-06-21 (-15d) |  |
| 13 | Проектирование сайта | 2023-05-31 → 2023-05-16 (-15d) | 2023-06-07 → 2023-05-23 (-15d) |  |
| 14 | Программирование сайта | 2023-06-07 → 2023-05-23 (-15d) | 2023-06-29 → 2023-06-14 (-15d) |  |
| 15 | Наполнение сайта | 2023-06-26 → 2023-06-08 (-18d) | 2023-06-29 → 2023-06-14 (-15d) |  |
| 16 | Тестирование сайта | 2023-06-29 → 2023-06-14 (-15d) | 2023-07-06 → 2023-06-21 (-15d) |  |
| 17 | Сдача сайта заказчику | 2023-07-06 → 2023-06-21 (-15d) | 2023-07-06 → 2023-06-21 (-15d) |  |

## Version 8 (saved 2023-03-21, file rk1_8_1.mpp)

Note of the change: readme

Last finish 2023-06-21 → 2023-06-28 (+7d).

Changed:

| ID | Task | Start | Finish | Duration | Other |
| --- | --- | --- | --- | --- | --- |
| 3 | Обучение персонала |  | 2023-05-16 → 2023-05-23 (+7d) | 17.14d → 22.14d | constraint none → start no earlier than 2023-04-18 |
| 4 | **Разработка представительских сайтов** | 2023-05-16 → 2023-05-23 (+7d) | 2023-05-26 → 2023-06-02 (+7d) |  |  |
| 5 | **Разработка сайта 1** | 2023-05-16 → 2023-05-23 (+7d) | 2023-05-23 → 2023-05-30 (+7d) |  |  |
| 6 | Разработка дизайна сайта 1 | 2023-05-16 → 2023-05-23 (+7d) | 2023-05-18 → 2023-05-25 (+7d) |  |  |
| 7 | Программирование сайта 1 | 2023-05-18 → 2023-05-25 (+7d) | 2023-05-23 → 2023-05-30 (+7d) |  |  |
| 8 | **Разработка сайта 2** | 2023-05-19 → 2023-05-26 (+7d) | 2023-05-26 → 2023-06-02 (+7d) |  |  |
| 9 | Разработка дизайна сайта 2 | 2023-05-19 → 2023-05-26 (+7d) | 2023-05-23 → 2023-05-30 (+7d) |  |  |
| 10 | Программирование сайта 2 | 2023-05-23 → 2023-05-30 (+7d) | 2023-05-26 → 2023-06-02 (+7d) |  |  |
| 11 | Представительские сайты созданы | 2023-05-26 → 2023-06-02 (+7d) | 2023-05-26 → 2023-06-02 (+7d) |  |  |
| 12 | **Разработка коропоративного сайта** | 2023-05-16 → 2023-05-23 (+7d) | 2023-06-21 → 2023-06-28 (+7d) |  |  |
| 13 | Проектирование сайта | 2023-05-16 → 2023-05-23 (+7d) | 2023-05-23 → 2023-05-30 (+7d) |  |  |
| 14 | Программирование сайта | 2023-05-23 → 2023-05-30 (+7d) | 2023-06-14 → 2023-06-21 (+7d) |  |  |
| 15 | Наполнение сайта | 2023-06-08 → 2023-06-16 (+8d) | 2023-06-14 → 2023-06-21 (+7d) |  |  |
| 16 | Тестирование сайта | 2023-06-14 → 2023-06-21 (+7d) | 2023-06-21 → 2023-06-28 (+7d) |  |  |
| 17 | Сдача сайта заказчику | 2023-06-21 → 2023-06-28 (+7d) | 2023-06-21 → 2023-06-28 (+7d) |  |  |

## Version 9 (saved 2023-03-21, file rk1_9.mpp)

Note of the change: readme

Last finish stays 2023-06-28.

Changed:

| ID | Task | Start | Finish | Total float | Other |
| --- | --- | --- | --- | --- | --- |
| 1 | Начало проекта |  |  |  | baseline start none → 2023-04-03; baseline finish none → 2023-04-03 |
| 2 | Установка ПО |  |  |  | baseline start none → 2023-04-04; baseline finish none → 2023-04-24 |
| 3 | Обучение персонала |  |  |  | baseline start none → 2023-04-18; baseline finish none → 2023-05-23 |
| 4 | **Разработка представительских сайтов** | 2023-05-23 → 2023-05-30 (+7d) | 2023-06-02 → 2023-06-09 (+7d) | 17d → 12d | baseline start none → 2023-05-30; baseline finish none → 2023-06-09 |
| 5 | **Разработка сайта 1** | 2023-05-23 → 2023-05-30 (+7d) | 2023-05-30 → 2023-06-06 (+7d) | 17d → 12d | baseline start none → 2023-05-30; baseline finish none → 2023-06-06 |
| 6 | Разработка дизайна сайта 1 | 2023-05-23 → 2023-05-30 (+7d) | 2023-05-25 → 2023-06-01 (+7d) | 17d → 12d | baseline start none → 2023-05-30; baseline finish none → 2023-06-01 |
| 7 | Программирование сайта 1 | 2023-05-25 → 2023-06-01 (+7d) | 2023-05-30 → 2023-06-06 (+7d) | 17d → 12d | baseline start none → 2023-06-01; baseline finish none → 2023-06-06 |
| 8 | **Разработка сайта 2** | 2023-05-26 → 2023-06-02 (+7d) | 2023-06-02 → 2023-06-09 (+7d) | 17d → 12d | baseline start none → 2023-06-02; baseline finish none → 2023-06-09 |
| 9 | Разработка дизайна сайта 2 | 2023-05-26 → 2023-06-02 (+7d) | 2023-05-30 → 2023-06-06 (+7d) | 17d → 12d | baseline start none → 2023-06-02; baseline finish none → 2023-06-06 |
| 10 | Программирование сайта 2 | 2023-05-30 → 2023-06-06 (+7d) | 2023-06-02 → 2023-06-09 (+7d) | 17d → 12d | baseline start none → 2023-06-06; baseline finish none → 2023-06-09 |
| 11 | Представительские сайты созданы | 2023-06-02 → 2023-06-09 (+7d) | 2023-06-02 → 2023-06-09 (+7d) | 17d → 12d | baseline start none → 2023-06-09; baseline finish none → 2023-06-09 |
| 12 | **Разработка коропоративного сайта** |  |  |  | baseline start none → 2023-05-23; baseline finish none → 2023-06-28 |
| 13 | Проектирование сайта |  |  |  | resources Соколов; Петров → Кузнецов; Тимофеев; baseline start none → 2023-05-23; baseline finish none → 2023-05-30 |
| 14 | Программирование сайта |  |  |  | baseline start none → 2023-05-30; baseline finish none → 2023-06-21 |
| 15 | Наполнение сайта |  |  |  | baseline start none → 2023-06-16; baseline finish none → 2023-06-21 |
| 16 | Тестирование сайта |  |  |  | baseline start none → 2023-06-21; baseline finish none → 2023-06-28 |
| 17 | Сдача сайта заказчику |  |  |  | baseline start none → 2023-06-28; baseline finish none → 2023-06-28 |

## Version 10 (data date 2023-06-06, saved 2023-03-28, file rk1_10.mpp)

Note of the change: readme

Last finish stays 2023-06-28. Complete tasks 0 → 8.

Changed:

| ID | Task | Start | Finish | Duration | Complete | Total float |
| --- | --- | --- | --- | --- | --- | --- |
| 1 | Начало проекта | 2023-04-03 A | 2023-04-03 A |  | 0% → 100% | 0d → none |
| 2 | Установка ПО | 2023-04-04 A | 2023-04-24 A |  | 0% → 100% | 0d → none |
| 3 | Обучение персонала | 2023-04-18 A | 2023-05-23 → 2023-05-31 A (+8d) | 22.14d → 29d | 0% → 100% | 0d → none |
| 4 | **Разработка представительских сайтов** | 2023-05-30 A | 2023-06-09 A |  | 0% → 100% | 12d → none |
| 5 | **Разработка сайта 1** | 2023-05-30 A | 2023-06-06 A |  | 0% → 100% | 12d → none |
| 6 | Разработка дизайна сайта 1 | 2023-05-30 A | 2023-06-01 A |  | 0% → 100% | 12d → none |
| 7 | Программирование сайта 1 | 2023-06-01 A | 2023-06-06 A |  | 0% → 100% | 12d → none |
| 8 | **Разработка сайта 2** | 2023-06-02 A | 2023-06-09 A |  | 0% → 100% | 12d → none |
| 9 | Разработка дизайна сайта 2 | 2023-06-02 A | 2023-06-06 → 2023-06-09 A (+3d) | 2d → 5d | 0% → 100% | 12d → none |
| 10 | Программирование сайта 2 | 2023-06-06 A | 2023-06-09 A |  | 0% → 100% | 12d → none |
| 11 | Представительские сайты созданы | 2023-06-09 A | 2023-06-09 A |  | 0% → 100% | 12d → none |
| 12 | **Разработка коропоративного сайта** | 2023-05-23 A |  |  | 0% → 65% |  |
| 13 | Проектирование сайта | 2023-05-23 A | 2023-05-30 → 2023-06-13 (+14d) | 5d → 6d | 0% → 50% | 0d → 4d |
| 14 | Программирование сайта | 2023-05-30 A |  |  | 0% → 92% | 0d → 1.86d |
| 15 | Наполнение сайта | 2023-06-16 A |  |  | 0% → 62% |  |
